# Projeto_de_GP

Schedule from MS Project, 2022-11-01 to 2023-03-13, status date 2023-03-13, costs in €.

## Calendars

- Standard: Mon-Fri 08:00-12:00, 13:00-17:00; Sat-Sun off.

## Resources

| Resource | Rate |
| --- | --- |
| Programador Senior 1 | 12 |
| Programador Senior 2 | 12 |
| Programador Senior 3 | 12 |
| Programador Júnior 1 | 8 |
| Programador Júnior 2 | 8 |
| Programador Júnior 3 | 8 |
| Programador Júnior 4 | 8 |
| Programador Júnior 5 | 8 |
| Programador Júnior 6 | 8 |
| Programador Júnior 7 | 8 |
| Designer 1 | 9.5 |
| Designer 2 | 9.5 |
| Gestor 1 | 15 |
| Gestor 2 | 15 |
| Negociador 3 | 8 |
| Computadores 1 |  |
| Computadores 2 |  |
| Computadores 3 |  |
| Computadores 4 |  |
| Computadores 5 |  |
| Computadores 6 |  |
| Computadores 7 |  |
| Computadores 8 |  |
| Computadores 9 |  |
| Computadores 10 |  |
| Computadores 11 |  |
| Servidor 1 |  |
| Serviço de Cloud 1 |  |
| Negociador 2 | 8 |
| Negociador 1 | 8 |
| Gestor 3 | 15 |
| Consultor 2 | 7 |
| Consultor 1 | 7 |
| Servidor 3 |  |
| Servidor 2 |  |
| Serviço de Cloud 2 |  |
| Serviço de Cloud 3 |  |
| Programador Júnior 8 | 8 |

## Schedule

| ID | WBS | Task | Type | Duration | Start | Finish | Predecessors | Baseline start | Baseline finish | Baseline duration | Total slack | Constraint | Resources | Work | Cost | Baseline cost |
| --- | --- | --- | --- | --- | --- | --- | --- | --- | --- | --- | --- | --- | --- | --- | --- | --- |
| 1 | 1 | **Inicialização** |  | 35d | 2022-11-01 | 2022-12-19 |  | 2022-11-01 | 2022-12-19 | 35d | 0d |  |  | 448h | 15,880 | 15,640 |
| 2 | 1.1 | Análise de Mercado |  | 10d | 2022-11-01 | 2022-11-14 |  | 2022-11-01 | 2022-11-14 | 10d | 0d | start no earlier than 2022-11-01 | Consultor 1; Computadores 1 [0.1%]; Computadores 2 [0.1%]; Gestor 2 | 160h | 5,360 | 5,360 |
| 3 | 1.2 | Análise de Risco |  | 10d | 2022-11-15 | 2022-11-28 | 2 | 2022-11-15 | 2022-11-28 | 10d | 0d | start no earlier than 2022-11-01 | Consultor 2; Gestor 3; Computadores 3 [0.1%]; Computadores 4 [0.1%] | 160h | 5,360 | 5,360 |
| 4 | 1.3 | Formação de equipa |  | 10d | 2022-11-29 | 2022-12-12 | 3 | 2022-11-29 | 2022-12-12 | 10d | 0d | start no earlier than 2022-11-01 | Programador Senior 3; Computadores 5 [0.1%] | 80h | 2,760 | 2,600 |
| 5 | 1.4 | Definição de hórario de trabalho |  | 1d | 2022-12-13 | 2022-12-14 | 4 | 2022-12-13 | 2022-12-14 | 1d | 0d |  | Gestor 1; Programador Senior 1; Computadores 1 [0.1%]; Computadores 2 [0.1%] | 16h | 216 | 200 |
| 6 | 1.5 | Organização da equipa |  | 2d | 2022-12-15 | 2022-12-19 | 5 | 2022-12-15 | 2022-12-19 | 2d | 0d |  | Programador Senior 2; Programador Senior 3; Computadores 5 [0.1%]; Computadores 6 [0.1%] | 32h | 2,184 | 2,120 |
| 7 | 2 | **Design** |  | 10d | 2022-12-19 | 2023-01-02 | 1 | 2022-12-19 | 2023-01-02 | 10d | 0d |  |  | 144h | 1,368 | 1,080 |
| 8 | 2.1 | Template |  | 9d | 2022-12-20 | 2023-01-02 |  | 2022-12-20 | 2023-01-02 | 9d | 0d | start no earlier than 2022-11-01 | Designer 1; Computadores 1 [0.1%] | 72h | 684 | 540 |
| 9 | 2.2 | Idealização do comportamento das ações |  | 9d | 2022-12-20 | 2022-12-30 |  | 2022-12-20 | 2022-12-30 | 9d | 1d | start no earlier than 2022-11-01 | Designer 2; Computadores 2 [0.1%] | 72h | 684 | 540 |
| 10 | 2.3 | Entrega do design | milestone | 0d | 2022-12-19 | 2022-12-19 |  | 2022-12-19 | 2022-12-19 | 0d | 10d |  |  |  |  |  |
| 11 | 3 | **Back-End** |  | 11d | 2023-01-03 | 2023-01-17 | 7 | 2023-01-03 | 2023-01-17 | 11d | 0d |  |  | 368h | 71,428 | 21,370 |
| 12 | 3.1 | **Servidores** |  | 6d | 2023-01-03 | 2023-01-10 |  | 2023-01-03 | 2023-01-10 | 6d | 0d |  |  | 144h | 61,344 | 15,960 |
| 13 | 3.1.1 | Instalação dos servidores |  | 3d | 2023-01-03 | 2023-01-05 |  | 2023-01-03 | 2023-01-05 | 3d | 0d |  | Programador Senior 1; Programador Júnior 1; Programador Júnior 2; Computadores 1 [0.1%]; Computadores 2 [0.1%]; Computadores 3 [0.1%]; Servidor 1 [0.1%]; Servidor 2 [0.1%]; Servidor 3 [0.1%] | 72h | 60,672 | 15,480 |
| 14 | 3.1.2 | Programação dos servidores |  | 3d | 2023-01-06 | 2023-01-10 | 13 | 2023-01-06 | 2023-01-10 | 3d | 0d |  | Programador Senior 1; Programador Júnior 1; Programador Júnior 2; Computadores 1 [0.1%]; Computadores 2 [0.1%]; Computadores 3 [0.1%]; Servidor 3 [0.1%]; Servidor 2 [0.1%]; Servidor 1 [0.1%] | 72h | 672 | 480 |
| 15 | 3.2 | **cloud** |  | 6d | 2023-01-03 | 2023-01-10 |  | 2023-01-03 | 2023-01-10 | 6d | 5d |  |  | 144h | 5,844 | 1,410 |
| 16 | 3.2.1 | Programação |  | 6d | 2023-01-03 | 2023-01-10 |  | 2023-01-03 | 2023-01-10 | 6d | 5d |  | Programador Senior 2; Programador Júnior 3; Programador Júnior 4; Computadores 4 [0.1%]; Computadores 5 [0.1%]; Computadores 6 [0.1%]; Serviço de Cloud 1 [0.1%]; Serviço de Cloud 2 [0.1%]; Serviço de Cloud 3 [0.1%] | 144h | 5,844 | 1,410 |
| 17 | 3.3 | **Criação de registo de informações** |  | 5d | 2023-01-11 | 2023-01-17 | 12 | 2023-01-11 | 2023-01-17 | 5d | 0d |  |  | 80h | 4,240 | 4,000 |
| 18 | 3.3.1 | Registo de informção do utilizadores |  | 5d | 2023-01-11 | 2023-01-17 |  | 2023-01-11 | 2023-01-17 | 5d | 0d | start no earlier than 2023-01-04 | Programador Júnior 7; Computadores 9 [0.1%] | 40h | 2,120 | 2,000 |
| 19 | 3.3.2 | Registo de informações dos hospitais aderentes |  | 5d | 2023-01-11 | 2023-01-17 |  | 2023-01-11 | 2023-01-17 | 5d | 0d | start no earlier than 2022-11-01 | Programador Júnior 8; Computadores 10 [0.1%] | 40h | 2,120 | 2,000 |
| 20 | 4 | **Front-End** |  | 26d | 2023-01-18 | 2023-02-22 | 11 | 2023-01-18 | 2023-02-22 | 26d | 0d |  |  | 536h | 8,048 | 6,480 |
| 21 | 4.1 | **Login** |  | 17d | 2023-01-18 | 2023-02-09 | 11 | 2023-01-18 | 2023-02-09 | 17d | 0d |  |  | 272h | 2,176 | 1,360 |
| 22 | 4.1.1 | Encriptação de dados do utilizador |  | 7d | 2023-01-18 | 2023-01-26 |  | 2023-01-18 | 2023-01-26 | 7d | 0d |  | Programador Júnior 6; Programador Júnior 7; Computadores 1 [0.1%]; Computadores 2 [0.1%] | 112h | 896 | 560 |
| 23 | 4.1.2 | Comunicação com o backend |  | 5d | 2023-01-27 | 2023-02-02 | 22 | 2023-01-27 | 2023-02-02 | 5d | 0d |  | Programador Júnior 6; Programador Júnior 7; Computadores 1 [0.1%]; Computadores 2 [0.1%] | 80h | 640 | 400 |
| 24 | 4.1.3 | Integração de acordo com o Front-End |  | 5d | 2023-02-03 | 2023-02-09 | 23 | 2023-02-03 | 2023-02-09 | 5d | 0d |  | Programador Júnior 6; Programador Júnior 7; Computadores 1 [0.1%]; Computadores 2 [0.1%] | 80h | 640 | 400 |
| 25 | 4.2 | Entrega do Login | milestone | 0d | 2023-02-09 | 2023-02-09 | 21 | 2023-02-09 | 2023-02-09 | 0d | 9d |  | Programador Júnior 6; Programador Júnior 7; Computadores 1; Computadores 2 |  |  |  |

| ID | WBS | Task | Type | Duration | Start | Finish | Predecessors | Baseline start | Baseline finish | Baseline duration | Total slack | Free slack | Constraint | Resources | Work | Cost | Baseline cost |
| --- | --- | --- | --- | --- | --- | --- | --- | --- | --- | --- | --- | --- | --- | --- | --- | --- | --- |
| 26 | 4.3 | **Consulta de informações Marcação de consultas** |  | 9d | 2023-02-10 | 2023-02-22 | 21 | 2023-02-10 | 2023-02-22 | 9d | 0d |  |  |  | 216h | 5,328 | 4,680 |
| 27 | 4.3.1 | **Consultar informações do utilizador** |  | 5d | 2023-02-10 | 2023-02-16 |  | 2023-02-10 | 2023-02-16 | 5d | 4d |  |  |  | 88h | 4,304 | 4,040 |
| 28 | 4.3.1.1 | Boletim de Vacinas |  | 5d | 2023-02-10 | 2023-02-16 |  | 2023-02-10 | 2023-02-16 | 5d | 4d |  |  | Programador Júnior 4; Computadores 3 [0.1%] | 40h | 320 | 200 |
| 29 | 4.3.1.2 | Exames Feitos |  | 3d | 2023-02-10 | 2023-02-14 |  | 2023-02-10 | 2023-02-14 | 3d | 6d |  |  | Programador Júnior 8; Computadores 4 [0.1%] | 24h | 192 | 120 |
| 30 | 4.3.1.3 | Receitas Médicas |  | 2d | 2023-02-10 | 2023-02-13 |  | 2023-02-10 | 2023-02-13 | 2d | 7d |  |  | Programador Júnior 5; Computadores 7 [0.1%] | 16h | 1,928 | 1,880 |
| 31 | 4.3.1.4 | Baixas/Atestados |  | 1d | 2023-02-10 | 2023-02-10 |  | 2023-02-10 | 2023-02-10 | 1d | 8d |  |  | Programador Júnior 7; Computadores 8 [0.1%] | 8h | 1,864 | 1,840 |
| 32 | 4.3.2 | **Consultar informação de hospitais** |  | 9d | 2023-02-10 | 2023-02-22 |  | 2023-02-10 | 2023-02-22 | 9d | 0d |  |  |  | 128h | 1,024 | 640 |
| 33 | 4.3.2.1 | Por Região |  | 2d | 2023-02-10 | 2023-02-13 |  | 2023-02-10 | 2023-02-13 | 2d | 0d |  |  | Programador Júnior 2; Computadores 7 [0.1%] | 16h | 128 | 80 |
| 34 | 4.3.2.2 | Por Distrito |  | 3d | 2023-02-14 | 2023-02-16 | 33 | 2023-02-14 | 2023-02-16 | 3d | 0d |  |  | Programador Júnior 2; Programador Júnior 3; Computadores 6 [0.1%]; Computadores 7 [0.1%] | 48h | 384 | 240 |
| 35 | 4.3.2.3 | Privado/Publico |  | 2d | 2023-02-17 | 2023-02-20 | 34 | 2023-02-17 | 2023-02-20 | 2d | 0d |  |  | Programador Júnior 2; Programador Júnior 3; Computadores 6 [0.1%]; Computadores 7 [0.1%] | 32h | 256 | 160 |
| 36 | 4.3.2.4 | Disponibilidade dos hospitais |  | 2d | 2023-02-21 | 2023-02-22 | 35 | 2023-02-21 | 2023-02-22 | 2d | 0d |  |  | Programador Júnior 2; Programador Júnior 3; Computadores 6 [0.1%]; Computadores 7 [0.1%] | 32h | 256 | 160 |
| 37 | 4.3.3 | Entrega das Consultas | milestone | 0d | 2023-02-22 | 2023-02-22 | 36 | 2023-02-22 | 2023-02-22 | 0d | 0d |  |  | Programador Júnior 2; Programador Júnior 3; Computadores 6; Computadores 7 |  |  |  |
| 38 | 4.4 | **Outras informações** |  | 5d | 2023-02-10 | 2023-02-16 | 21 | 2023-02-10 | 2023-02-16 | 5d | 4d |  |  |  | 40h | 480 | 400 |
| 39 | 4.4.1 | Medicos |  | 5d | 2023-02-10 | 2023-02-16 |  | 2023-02-10 | 2023-02-16 | 5d | 4d |  |  | Computadores 8 [0.1%]; Programador Senior 3 | 40h | 480 | 400 |
| 40 | 4.5 | Contactos |  | 1d | 2023-02-10 | 2023-02-10 | 21 | 2023-02-10 | 2023-02-10 | 1d | 8d |  | start no earlier than 2022-11-01 | Programador Júnior 1; Computadores 8 [0.1%] | 8h | 64 | 40 |
| 41 | 4.6 | Entrega do Front-End | milestone | 0d | 2023-02-22 | 2023-02-22 | 21, 26, 38 | 2023-02-22 | 2023-02-22 | 0d | 0d |  |  |  |  |  |  |
| 42 | 5 | **Aplicação** |  | 13d | 2023-02-23 | 2023-03-13 | 11, 20 | 2023-02-23 | 2023-03-13 | 13d | 0d |  |  |  | 488h | 4,320 | 2,960 |
| 43 | 5.1 | **Criar estrutura Mobile** |  | 11d | 2023-02-23 | 2023-03-09 |  | 2023-02-23 | 2023-03-09 | 11d | 2d |  |  |  | 176h | 1,408 | 880 |
| 44 | 5.1.1 | **Programação em mobile** |  | 11d | 2023-02-23 | 2023-03-09 |  | 2023-02-23 | 2023-03-09 | 11d | 2d | 0d |  |  | 176h | 1,408 | 880 |
| 45 | 5.1.1.1 | Adicionar BackEnd |  | 5d | 2023-02-23 | 2023-03-01 |  | 2023-02-23 | 2023-03-01 | 5d | 2d | 0d |  | Programador Júnior 1; Programador Júnior 2; Computadores 1 [0.1%]; Computadores 2 [0.1%] | 80h | 640 | 400 |
| 46 | 5.1.1.2 | Adicionar FrontEnd |  | 6d | 2023-03-02 | 2023-03-09 | 45 | 2023-03-02 | 2023-03-09 | 6d | 2d |  |  | Programador Júnior 1; Programador Júnior 2 | 96h | 768 | 480 |
| 47 | 5.1.2 | Entregar aplicação | milestone | 0d | 2023-03-09 | 2023-03-09 | 44 | 2023-03-09 | 2023-03-09 | 0d | 2d |  |  |  |  |  |  |
| 48 | 5.2 | **Criar Site** |  | 13d | 2023-02-23 | 2023-03-13 |  | 2023-02-23 | 2023-03-13 | 13d | 0d |  |  |  | 312h | 2,912 | 2,080 |
| 49 | 5.2.1 | Adicionar BackEnd |  | 5d | 2023-02-23 | 2023-03-01 |  | 2023-02-23 | 2023-03-01 | 5d | 0d |  |  | Computadores 3 [0.1%]; Computadores 4 [0.1%]; Computadores 5 [0.1%]; Programador Júnior 7; Programador Júnior 8; Programador Senior 3 | 120h | 1,120 | 800 |
| 50 | 5.2.2 | Adicionar Front End |  | 8d | 2023-03-02 | 2023-03-13 | 49 | 2023-03-02 | 2023-03-13 | 8d | 0d |  |  | Computadores 3 [0.1%]; Computadores 4 [0.1%]; Computadores 5 [0.1%]; Programador Júnior 7; Programador Júnior 8; Programador Senior 3 | 192h | 1,792 | 1,280 |
| 51 | 5.2.3 | Entregar Site | milestone | 0d | 2023-03-13 | 2023-03-13 | 49, 50 | 2023-03-13 | 2023-03-13 | 0d | 0d |  |  |  |  |  |  |

| ID | WBS | Task | Duration | Start | Finish | Predecessors | Baseline start | Baseline finish | Baseline duration | Total slack | Free slack | Constraint | Resources | Work | Cost | Baseline cost |
| --- | --- | --- | --- | --- | --- | --- | --- | --- | --- | --- | --- | --- | --- | --- | --- | --- |
| 52 | 6 | **Parcerias** | 15d | 2022-12-02 | 2022-12-22 |  | 2022-12-02 | 2022-12-22 | 15d | 56.75d | 0d |  |  | 280h | 4,040 | 4,040 |
| 53 | 6.1 | **Seguros** | 15d | 2022-12-02 | 2022-12-22 |  | 2022-12-02 | 2022-12-22 | 15d | 56.75d |  |  |  | 200h | 1,600 | 1,600 |
| 54 | 6.1.1 | Informações sobre as seguradoras | 10d | 2022-12-02 | 2022-12-15 |  | 2022-12-02 | 2022-12-15 | 10d | 61.75d |  |  | Negociador 1; Computadores 9 [0.1%] | 80h | 640 | 640 |
| 55 | 6.1.2 | Contratos com seguradoras | 15d | 2022-12-02 | 2022-12-22 |  | 2022-12-02 | 2022-12-22 | 15d | 56.75d |  |  | Computadores 10 [0.1%]; Negociador 2 | 120h | 960 | 960 |
| 56 | 6.2 | Descontos | 10d | 2022-12-02 | 2022-12-15 |  | 2022-12-02 | 2022-12-15 | 10d | 61.75d |  |  | Computadores 11 [0.1%]; Negociador 3 | 80h | 2,440 | 2,440 |
| 57 | 7 | **Fecho de projeto** | 5d | 2022-12-02 | 2022-12-08 |  | 2022-12-02 | 2022-12-08 | 5d | 66.75d | 1d |  |  | 104h | 1,392 | 1,320 |
| 58 | 7.1 | Reunião Final | 1d | 2022-12-02 | 2022-12-02 |  | 2022-12-02 | 2022-12-02 | 1d | 70.75d |  |  | Gestor 1; Programador Júnior 1; Programador Júnior 2; Programador Júnior 3; Computadores 1 [0.1%]; Computadores 2 [0.1%]; Computadores 3 [0.1%]; Computadores 4 [0.1%] | 32h | 312 | 240 |
| 59 | 7.2 | Relátorio | 4d | 2022-12-02 | 2022-12-07 |  | 2022-12-02 | 2022-12-07 | 4d | 67.75d |  |  | Gestor 2; Computadores 5 [0.1%] | 32h | 480 | 480 |
| 60 | 7.3 | Documentação | 5d | 2022-12-02 | 2022-12-08 |  | 2022-12-02 | 2022-12-08 | 5d | 66.75d |  |  | Gestor 3; Computadores 6 [0.1%] | 40h | 600 | 600 |
| 61 | 8 | **Reunião** | 53.25d | 2022-12-12 | 2023-02-23 |  | 2022-12-12 | 2023-02-23 | 53.25d | 12.75d |  |  |  | 54h | 717 | 679 |
| 62 | 8.1 | Reunião de Inicialização do Projeto | 2h | 2022-12-20 | 2022-12-20 | 1 | 2022-12-20 | 2022-12-20 | 2h | 59.75d |  | start no earlier than 2022-11-07 | Gestor 2; Gestor 3; Gestor 1; Consultor 1 | 8h | 104 | 104 |
| 63 | 8.2 | Reunião sobre o design da app | 2h | 2023-01-03 | 2023-01-03 | 7 | 2023-01-03 | 2023-01-03 | 2h | 49.75d |  | start no earlier than 2022-11-14 | Gestor 2; Gestor 3; Gestor 1; Designer 1 | 8h | 109 | 105 |
| 64 | 8.3 | Reunião sobre o Back-End | 2h | 2023-01-18 | 2023-01-18 | 11 | 2023-01-18 | 2023-01-18 | 2h | 38.75d |  | start no earlier than 2022-11-21 | Gestor 2; Gestor 3; Gestor 1; Programador Júnior 1; Programador Senior 1 | 10h | 130 | 120 |
| 65 | 8.4 | Reunião do Front-End | 2h | 2023-02-23 | 2023-02-23 | 20 | 2023-02-23 | 2023-02-23 | 2h | 12.75d |  | start no earlier than 2022-11-28 | Gestor 2; Gestor 3; Gestor 1; Programador Senior 2; Programador Júnior 3 | 10h | 130 | 120 |
| 66 | 8.5 | Reunião Parcerias | 2h | 2022-12-23 | 2022-12-23 | 52 | 2022-12-23 | 2022-12-23 | 2h | 56.75d |  | start no earlier than 2022-12-05 | Gestor 2; Gestor 3; Gestor 1; Programador Júnior 2; Programador Senior 3 | 10h | 130 | 120 |
| 67 | 8.6 | Reunião Fecho de Projeto | 2h | 2022-12-12 | 2022-12-12 | 57 | 2022-12-12 | 2022-12-12 | 2h | 65.75d |  | start no earlier than 2022-12-12 | Gestor 2; Gestor 3; Gestor 1; Programador Senior 1 | 8h | 114 | 110 |
